# Don Funk Music Video

Schedule from MS Project, 2016-01-04 to 2016-07-15, costs in $.
P8 LLC

## Calendars

- Standard: Mon-Fri 08:00-12:00, 13:00-17:00; Sat-Sun off. Exceptions (off unless hours are given): 2016-01-18 to 2018-01-15 (Martin Luther King Jr. Day, recurring), 2016-05-30 to 2018-05-28 (Memorial Day, recurring).

## Resources

| Resource | Unit | Rate | Notes |
| --- | --- | --- | --- |
| Jamie Reding |  | 25 | Jamie on vacation Jan 28 and 29; available for consult at home if necessary |
| Scott Seely |  | 19.5 |  |
| Jeff Pike |  | 18.75 |  |
| Judy Lew |  | 19.5 |  |
| Brenda Diaz |  | 12.75 |  |
| Brad Sutton |  | 16.5 |  |
| Annete Hill |  | 20 |  |
| Ryan Ihrig |  | 12 |  |
| Yan Li |  | 18.5 |  |
| Sound Technician |  | 16.5 |  |
| Digital Truck-Mounted Video Camera |  | 25 |  |
| Sound Editing Studio |  | 31.25 |  |
| Light Banks |  |  |  |
| Video Editing Studio |  | 31.25 |  |
| Microphone Bundles |  |  |  |
| Dolly |  | 3.12 |  |
| DVD | 2-hour disc | 10 |  |
| Travel |  |  |  |
| Food |  |  |  |
| Shu Ito |  |  |  |
| Maria Hammond |  |  |  |
| Jim Kim |  |  |  |
| Bjorn Rettig |  |  |  |
| Florian Voss |  |  |  |
| Jane Clayton |  |  |  |
| Greg Guzik |  |  |  |
| David Barber |  |  |  |
| Annette Hill |  |  |  |
| Don Funk |  |  |  |
| Patricia Doyle |  |  |  |
| Luis Bonifaz |  |  |  |
| Chris Preston |  |  |  |
| electrician |  |  |  |
| dancers |  |  |  |
| musician |  |  |  |
| Dry Ice | 10 lb block |  |  |
| Frank Zhang |  |  |  |
| Bottled Water | 24 bottle case |  |  |
| Ido Ben-Sachar |  |  |  |
| Eva Corets |  |  |  |

## Schedule

| ID | WBS | Task | Type | Duration | Start | Finish | Predecessors | Total slack | Resources | Work | Cost |
| --- | --- | --- | --- | --- | --- | --- | --- | --- | --- | --- | --- |
| 1 | 1 | **Pre-Production** |  | 85d | 2016-01-04 | 2016-05-02 |  | 0d |  | 1000h | 17,641.43 |
| 2 | 1.1 | Pre-Production begins | milestone | 0d | 2016-01-04 | 2016-01-04 |  | 0d |  |  |  |
| 3 | 1.2 | Review screenplay |  | 3.6w | 2016-01-04 | 2016-01-26 | 2 | 0d | Scott Seely; Jeff Pike | 240h | 4,590 |
| 4 | 1.3 | Develop scene blocking and schedule |  | 1.2w | 2016-01-26 | 2016-02-02 | 3 | 0d | Scott Seely; Judy Lew | 80h | 1,560 |
| 5 | 1.4 | Develop production layouts |  | 0.5mo | 2016-02-02 | 2016-02-15 | 4 | 0d | Jeff Pike; Brenda Diaz; Annete Hill [50%]; Brad Sutton | 280h | 4,640 |
| 6 | 1.5 | Identify and reserve locations |  | 5w | 2016-02-16 | 2016-03-21 | 5 | 0d | Jeff Pike [57.1%]; Yan Li [57.1%]; Annete Hill [28.6%]; Ryan Ihrig [57.1%]; DVD [8 2-hour disc] | 400h | 6,851.43 |
| 7 | 1.6 | Book musicians |  | 2w | 2016-03-22 | 2016-04-04 | 6 | 0d |  |  |  |
| 8 | 1.7 | Book dancers |  | 2w | 2016-04-05 | 2016-04-18 | 7 | 0d |  |  |  |
| 9 | 1.8 | Reserve audio recording equipment |  | 1w | 2016-04-19 | 2016-04-25 | 8 | 0d |  |  |  |
| 10 | 1.9 | Reserve video recording equipment |  | 5d | 2016-04-26 | 2016-05-02 | 9 | 0d |  |  |  |
| 11 | 1.10 | Pre-Production complete | milestone | 0d | 2016-05-02 | 2016-05-02 | 10 | 0d |  |  |  |
| 12 | 2 | **Production** |  | 27d | 2016-05-02 | 2016-06-09 |  | 0d |  | 709h | 4,200 |
| 13 | 2.1 | Production begins | milestone | 0d | 2016-05-02 | 2016-05-02 | 11 | 0d |  |  |  |
| 14 | 2.2 | **Scene 1** |  | 6.75d | 2016-05-02 | 2016-05-11 |  | 0d |  | 189h | 1,570 |
| 15 | 2.2.1 | Scene 1 begin | milestone | 0d | 2016-05-02 | 2016-05-02 | 13 | 0d |  |  |  |
| 16 | 2.2.2 | Scene 1 setup |  | 2d | 2016-05-03 | 2016-05-04 | 15 | 0d | Light Banks; Chris Preston; Brad Sutton | 48h | 264 |
| 17 | 2.2.3 | Scene 1 rehearsal |  | 6h | 2016-05-05 | 2016-05-05 | 16 | 0d | Food [0.1%]; Frank Zhang [50%]; Jim Kim; dancers; musician | 21h | 500 |
| 18 | 2.2.4 | Scene 1 vocal recording |  | 1d | 2016-05-05 | 2016-05-06 | 17 | 0d | Food [0.1%]; Jeff Pike; Don Funk; Sound Technician; musician | 32h | 532 |
| 19 | 2.2.5 | Scene 1 video shoot |  | 2d | 2016-05-06 | 2016-05-10 | 18 | 0d | Sound Technician; Microphone Bundles; Don Funk; DVD [1 2-hour disc]; David Barber [50%]; Greg Guzik; Bottled Water [1 24 bottle case] | 72h | 274 |
| 20 | 2.2.6 | Scene 1 teardown |  | 1d | 2016-05-10 | 2016-05-11 | 19 | 0d | Ido Ben-Sachar; Patricia Doyle | 16h |  |
| 21 | 2.2.7 | Scene 1 complete | milestone | 0d | 2016-05-11 | 2016-05-11 | 20 | 0d |  |  |  |
| 22 | 2.3 | **Scene 2** |  | 6.75d | 2016-05-11 | 2016-05-20 |  | 0d |  | 226h | 1,554 |
| 23 | 2.3.1 | Scene 2 begin | milestone | 0d | 2016-05-11 | 2016-05-11 | 21 | 0d |  |  |  |
| 24 | 2.3.2 | Scene 2 setup |  | 2d | 2016-05-11 | 2016-05-13 | 23 | 0d | Brad Sutton; Dolly; Chris Preston; electrician | 64h | 314 |
| 25 | 2.3.3 | Scene 2 rehearsal |  | 6h | 2016-05-13 | 2016-05-16 | 24 | 0d | Food [0.1%]; Luis Bonifaz; dancers; musician | 18h | 500 |
| 26 | 2.3.4 | Scene 2 vocal recording |  | 1d | 2016-05-16 | 2016-05-17 | 25 | 0d | Yan Li; Sound Technician; Don Funk; musician | 32h | 280 |
| 27 | 2.3.5 | Scene 2 video shoot |  | 2d | 2016-05-17 | 2016-05-19 | 26 | 0d | Digital Truck-Mounted Video Camera; Dolly; Don Funk; DVD [1 2-hour disc]; dancers; Bottled Water [1 24 bottle case]; Jane Clayton; musician | 96h | 460 |
| 28 | 2.3.6 | Scene 2 teardown |  | 1d | 2016-05-19 | 2016-05-20 | 27 | 0d | Ido Ben-Sachar; Patricia Doyle | 16h |  |
| 29 | 2.3.7 | Scene 2 complete | milestone | 0d | 2016-05-20 | 2016-05-20 | 28 | 0d |  |  |  |

Notes:
- 7: Call Andy Teal for the mandolin

| ID | WBS | Task | Type | Duration | Start | Finish | Predecessors | Total slack | Free slack | Resources | Work | Cost |
| --- | --- | --- | --- | --- | --- | --- | --- | --- | --- | --- | --- | --- |
| 30 | 2.4 | **Scene 3** |  | 6.75d | 2016-05-20 | 2016-06-01 |  | 0d |  |  | 138h | 406 |
| 31 | 2.4.1 | Scene 3 begin | milestone | 0d | 2016-05-20 | 2016-05-20 | 29 | 0d |  |  |  |  |
| 32 | 2.4.2 | Scene 3 setup |  | 2d | 2016-05-20 | 2016-05-24 | 31 | 0d |  | Brad Sutton; Chris Preston | 32h | 264 |
| 33 | 2.4.3 | Scene 3 rehearsal |  | 6h | 2016-05-24 | 2016-05-25 | 32 | 0d |  | dancers; Eva Corets; musician | 18h |  |
| 34 | 2.4.4 | Scene 3 vocal recording |  | 1d | 2016-05-25 | 2016-05-26 | 33 | 0d |  | musician; Sound Technician; Don Funk | 24h | 132 |
| 35 | 2.4.5 | Scene 3 video shoot |  | 2d | 2016-05-26 | 2016-05-31 | 34 | 0d |  | Bottled Water [1 24 bottle case]; dancers; DVD [1 2-hour disc]; Dry Ice [1 10 lb block]; Don Funk; Florian Voss | 48h | 10 |
| 36 | 2.4.6 | Scene 3 teardown |  | 1d | 2016-05-31 | 2016-06-01 | 35 | 0d |  | Ido Ben-Sachar; Patricia Doyle | 16h |  |
| 37 | 2.4.7 | Scene 3 complete | milestone | 0d | 2016-06-01 | 2016-06-01 | 36 | 0d |  |  |  |  |
| 38 | 2.5 | **Scene 4** |  | 6.75d | 2016-06-01 | 2016-06-09 |  | 0d |  |  | 156h | 670 |
| 39 | 2.5.1 | Scene 4 begin | milestone | 0d | 2016-06-01 | 2016-06-01 | 37 | 0d |  |  |  |  |
| 40 | 2.5.2 | Scene 4 setup |  | 2d | 2016-06-01 | 2016-06-03 | 39 | 0d |  | Brad Sutton; Chris Preston; electrician | 48h | 264 |
| 41 | 2.5.3 | Scene 4 rehearsal |  | 6h | 2016-06-03 | 2016-06-03 | 40 | 0d |  | dancers; musician | 12h |  |
| 42 | 2.5.4 | Scene 4 vocal recording |  | 1d | 2016-06-06 | 2016-06-06 | 41 | 0d |  | musician; Sound Technician; Don Funk; Luis Bonifaz | 32h | 132 |
| 43 | 2.5.5 | Scene 4 video shoot |  | 2d | 2016-06-07 | 2016-06-08 | 42 | 0d |  | Sound Technician; DVD [1 2-hour disc]; Don Funk; David Barber [50%]; Dry Ice [1 10 lb block]; Frank Zhang [50%]; Bottled Water [1 24 bottle case] | 48h | 274 |
| 44 | 2.5.6 | Scene 4 teardown |  | 1d | 2016-06-09 | 2016-06-09 | 43 | 0d |  | Patricia Doyle; Ido Ben-Sachar | 16h |  |
| 45 | 2.5.7 | Scene 4 complete | milestone | 0d | 2016-06-09 | 2016-06-09 | 44 | 0d |  |  |  |  |
| 46 | 2.6 | Production complete | milestone | 0d | 2016-06-09 | 2016-06-09 | 45 | 0d |  |  |  |  |
| 47 | 3 | **Post-Production** |  | 26d | 2016-06-09 | 2016-07-15 |  | 0d |  |  | 754h | 9,184.5 |
| 48 | 3.1 | Post-Production Begins | milestone | 0d | 2016-06-09 | 2016-06-09 | 46 | 0d |  |  |  |  |
| 49 | 3.2 | Log video footage |  | 3d | 2016-06-10 | 2016-06-14 | 48 | 0d |  | Video Editing Studio; Shu Ito | 48h | 750 |
| 50 | 3.3 | Log audio tracks by scene |  | 2d | 2016-06-10 | 2016-06-13 | 48 | 1d |  | Sound Editing Studio; Maria Hammond; Jim Kim | 48h | 500 |
| 51 | 3.4 | Rough edit video - paper |  | 1w | 2016-06-15 | 2016-06-21 | 49, 50 | 0d |  | Bjorn Rettig [50%]; Florian Voss; Jamie Reding; Jane Clayton; Shu Ito | 180h | 1,000 |
| 52 | 3.5 | Rough audio edit |  | 1w | 2016-06-22 | 2016-06-28 | 51 | 0d |  |  |  |  |
| 53 | 3.6 | Fine audio edit |  | 3d | 2016-06-29 | 2016-07-01 | 52 | 10.25d |  | Sound Editing Studio; Maria Hammond; Jim Kim | 72h | 750 |
| 54 | 3.7 | Fine video edit |  | 3d | 2016-06-29 | 2016-07-01 | 52 | 0d |  | Video Editing Studio; Shu Ito; Greg Guzik; David Barber [50%] | 84h | 750 |
| 55 | 3.8 | Dub audio to video |  | 2d | 2016-07-04 | 2016-07-05 | 54 | 0d |  | Video Editing Studio; Shu Ito | 32h | 500 |
| 56 | 3.9 | Internal review viewing |  | 1d | 2016-07-05 | 2016-07-06 | 55 | 0d |  | Scott Seely; Jamie Reding; Jeff Pike; Judy Lew; Brad Sutton; Brenda Diaz; Annette Hill [50%]; Don Funk; Ryan Ihrig | 53h | 783 |
| 57 | 3.10 | Final edits |  | 4d | 2016-07-06 | 2016-07-12 | 56 | 0.25d | 0d | Jamie Reding; Scott Seely; Jeff Pike; Brad Sutton; Annette Hill [50%]; Video Editing Studio | 132h | 2,664 |
| 58 | 3.11 | Formal approval viewing |  | 1d | 2016-07-12 | 2016-07-12 | 57 | 0d |  | Scott Seely; Judy Lew; Brad Sutton; Don Funk; Annette Hill [50%]; Jane Clayton; Video Editing Studio | 41h | 559.5 |
| 59 | 3.12 | Duplicate audio and video masters |  | 1d | 2016-07-13 | 2016-07-13 | 58 | 0d |  | Sound Technician; Sound Editing Studio; Video Editing Studio; Shu Ito; Patricia Doyle; Luis Bonifaz | 48h | 632 |
| 60 | 3.13 | Archive Copy 1 AV masters |  | 1d | 2016-07-14 | 2016-07-14 | 59 | 0d |  | Yan Li | 8h | 148 |
| 61 | 3.14 | Send Copy 2 AV master and dubbed master to |  | 1d | 2016-07-15 | 2016-07-15 | 60 | 0d |  | Yan Li | 8h | 148 |
| 62 | 3.15 | Post-Production complete | milestone | 0d | 2016-07-15 | 2016-07-15 | 61 | 0d |  |  |  |  |
