# WebApplication

Schedule from MS Project, 2019-01-01 to 2019-04-25, costs in $, A marks actual dates.

## Calendars

- Standard: Mon-Fri 08:00-12:00, 13:00-17:00; Sat-Sun off.

## Resources

| Resource | Group | Unit | Rate |
| --- | --- | --- | --- |
| Jennifer Conner | Work |  | 35 |
| Matt Smith | Work |  | 30 |
| Alexander Johnson | Work |  | 30 |
| Michael Less | Work |  | 29 |
| Kathy Stakes | Work |  | 33 |
| John Carmack | Work |  | 50 |
| Rental Workstation | Cost |  |  |
| Rented Network Rack | Cost |  |  |
| CAT5 Network Cable | Materials | Network Cable | 5 |
| Rental Monitor | Cost |  |  |
| Internet Connection | Cost |  |  |
| Ken Schwartz | Work |  | 20 |
| Kirk Mack | Work |  | 20 |
| Ann Martin | Work |  | 25 |
| Wanda Cook | Work |  | 20 |
| Laurence Sims | Work |  | 22 |
| Marco Fisher | Work |  | 25 |
| Wilbur Phillips | Work |  | 22 |
| Norman Holloway | Work |  | 20 |
| Office Rental | Cost |  |  |

## Schedule

| ID | WBS | Task | Type | Duration | Start | Finish | Predecessors | Complete | Remaining | Actual finish | Baseline start | Baseline finish | Baseline duration | Total slack | Free slack | Constraint | Deadline | Resources | Work | Actual work | Cost | Baseline cost | Actual cost | Location |
| --- | --- | --- | --- | --- | --- | --- | --- | --- | --- | --- | --- | --- | --- | --- | --- | --- | --- | --- | --- | --- | --- | --- | --- | --- |
| 1 | 1 | **Office Setup** |  | 6d | 2019-01-01 A | 2019-01-08 |  | 100% |  | 2019-01-07 | 2019-01-01 | 2019-01-08 | 6d |  |  |  |  |  | 24h | 24h | 37,700 | 37,700 | 3,700 |  |
| 2 | 1.1 | Office Rental |  | 1d | 2019-01-01 A | 2019-01-01 A |  | 100% |  |  | 2019-01-01 | 2019-01-01 | 1d |  |  |  |  | John Carmack; Office Rental [0.1%] | 8h | 8h | 15,400 | 15,400 | 400 | Headquarters |
| 3 | 1.2 | Network Setup |  | 2d | 2019-01-02 A | 2019-01-03 A | 2 | 100% |  |  | 2019-01-02 | 2019-01-03 | 2d |  |  |  |  | CAT5 Network Cable [500 Network Cable]; Internet Connection [0.1%]; Rented Network Rack [0.1%] |  |  | 15,500 | 15,500 | 2,500 | Headquarters |
| 4 | 1.3 | Workstation Setup |  | 2d | 2019-01-04 A | 2019-01-07 A | 3 | 100% |  |  | 2019-01-04 | 2019-01-07 | 2d |  |  |  |  | John Carmack; Rental Monitor [0.1%]; Rental Workstation [0.1%] | 16h | 16h | 6,800 | 6,800 | 800 | Headquarters |
| 5 | 1.4 | Team Workstation Profiles Generated | milestone | 0d | 2019-01-07 A | 2019-01-07 A | 4 | 100% |  |  | 2019-01-07 | 2019-01-07 | 0d |  |  |  | 2019-01-07 |  |  |  |  |  |  | CTO Office |
| 6 | 2 | **Planning** |  | 5d | 2019-01-08 A | 2019-01-14 A |  | 100% |  |  | 2019-01-08 | 2019-01-14 | 5d |  |  |  |  |  | 104h | 104h | 3,520 | 3,520 | 3,520 |  |
| 7 | 2.1 | Requirement gathering |  | 3d | 2019-01-08 A | 2019-01-10 A |  | 100% |  |  | 2019-01-08 | 2019-01-10 | 3d |  |  |  |  | Alexander Johnson; Ann Martin; Jennifer Conner | 72h | 72h | 2,160 | 2,160 | 2,160 | Boardroom |
| 8 | 2.2 | Scope Document |  | 2d | 2019-01-11 A | 2019-01-14 A | 7 | 100% |  |  | 2019-01-11 | 2019-01-14 | 2d |  |  |  |  | John Carmack; Jennifer Conner | 32h | 32h | 1,360 | 1,360 | 1,360 | Boardroom |
| 9 | 2.3 | Team Introduction | milestone | 0d | 2019-01-14 A | 2019-01-14 A | 8 | 100% |  |  | 2019-01-14 | 2019-01-14 | 0d |  |  |  | 2019-01-14 | Alexander Johnson; Ann Martin; Jennifer Conner; John Carmack; Kathy Stakes; Ken Schwartz; Kirk Mack; Laurence Sims; Marco Fisher; Matt Smith; Michael Less; Norman Holloway; Wanda Cook; Wilbur Phillips |  |  |  |  |  | Boardroom |
| 10 | 3 | **Implementation** |  | 10w | 2019-01-15 A | 2019-03-25 |  | 18% | 8.16w |  | 2019-01-15 | 2019-03-25 | 10w |  |  |  |  |  | 2560h | 432h | 64,480 | 64,480 | 10,456 |  |
| 11 | 3.1 | HTML/DOM design |  | 6w | 2019-01-15 A | 2019-02-25 |  | 25% | 4.5w |  | 2019-01-15 | 2019-02-25 | 6w | 43d | 0d |  |  | Wilbur Phillips; Ken Schwartz | 480h | 120h | 10,080 | 10,080 | 2,520 | Cubicles |
| 12 | 3.2 | CSS design |  | 6.8w | 2019-01-15 A | 2019-03-01 | 11SS | 22% | 5.3w |  | 2019-01-15 | 2019-02-25 | 6w | 39d | 0d |  |  | Norman Holloway [66.7%]; Michael Less [66.7%]; Kathy Stakes [66.7%] | 480h | 120h | 13,120 | 13,120 | 3,280 | Cubicles |
| 13 | 3.3 | Javascript/Jquery coding |  | 8w | 2019-01-15 A | 2019-03-11 | 12SS | 15% | 6.8w |  | 2019-01-15 | 2019-03-11 | 8w | 0d |  |  |  | Matt Smith; Marco Fisher; Laurence Sims; Kirk Mack | 1280h | 192h | 31,040 | 31,040 | 4,656 | Cubicles |
| 14 | 3.4 | Back-end AJAX/PHP/SQL design |  | 2w | 2019-03-12 | 2019-03-25 | 13 |  |  |  | 2019-03-12 | 2019-03-25 | 2w | 0d |  |  |  | Ken Schwartz; Kathy Stakes; John Carmack; Ann Martin | 320h |  | 10,240 | 10,240 |  | Cubicles |
| 15 | 3.5 | Team Meeting | milestone | 0d | 2019-03-25 | 2019-03-25 | 14 |  |  |  | 2019-03-25 | 2019-03-25 | 0d | 0d |  |  | 2019-03-25 | Alexander Johnson; Ann Martin; Jennifer Conner; John Carmack; Kathy Stakes; Ken Schwartz; Kirk Mack; Laurence Sims; Marco Fisher; Matt Smith; Michael Less; Norman Holloway; Wanda Cook; Wilbur Phillips |  |  |  |  |  | Boardroom |
| 16 | 4 | **Testing** |  | 4w | 2019-03-25 | 2019-04-19 |  |  |  |  | 2019-03-25 | 2019-04-19 | 4w |  |  |  |  |  | 600h |  | 15,800 | 15,800 |  |  |
| 17 | 4.1 | Bug testing phase 1 (alpha testing) |  | 1w | 2019-03-25 | 2019-03-29 |  |  |  |  | 2019-03-25 | 2019-03-29 | 1w | 4d | 0d |  |  | Michael Less; Alexander Johnson | 80h |  | 2,360 | 2,360 |  | Cubicles |
| 18 | 4.2 | Bug testing phase 2 (beta testing) |  | 1w | 2019-04-01 | 2019-04-05 | 17 |  |  |  | 2019-04-01 | 2019-04-05 | 1w | 4d | 0d |  |  | Norman Holloway; Wilbur Phillips; Laurence Sims; Marco Fisher | 160h |  | 3,560 | 3,560 |  | Cubicles |
| 19 | 4.3 | Remove security holes |  | 1w | 2019-04-08 | 2019-04-12 | 18 |  |  |  | 2019-04-08 | 2019-04-12 | 1w | 4d | 0d |  |  | John Carmack; Ann Martin; Wilbur Phillips | 120h |  | 3,880 | 3,880 |  | Cubicles |
| 20 | 4.4 | Public Test Phase |  | 2w | 2019-04-08 | 2019-04-19 | 19SS |  |  |  | 2019-04-08 | 2019-04-19 | 2w | 4d | 0d |  |  | Alexander Johnson; Ken Schwartz; Marco Fisher | 240h |  | 6,000 | 6,000 |  | Cubicles |
| 21 | 4.5 | Production Roll-out | milestone | 0d | 2019-04-19 | 2019-04-19 | 20 |  |  |  | 2019-04-19 | 2019-04-19 | 0d | 4d |  |  |  |  |  |  |  |  |  | Boardroom |
| 22 | 5 | **Documentation** |  | 13.8w | 2019-01-15 A | 2019-04-19 |  | 14% | 11.89w |  | 2019-01-15 | 2019-04-19 | 13.8w |  |  |  |  |  | 1128h | 156h | 32,000 | 30,600 | 4,604 |  |
| 23 | 5.1 | Create employee blog |  | 1d | 2019-01-15 A | 2019-01-15 A |  | 100% |  |  | 2019-01-15 | 2019-01-15 | 1d |  |  |  |  | Alexander Johnson | 8h | 8h | 240 | 240 | 240 | Cubicles |
| 24 | 5.2 | Write web application help section |  | 13w | 2019-01-21 A | 2019-04-19 | 23SS | 10% | 11.7w |  | 2019-01-28 | 2019-04-19 | 12w | 4d | 0d | start no earlier than 2019-01-21 |  | Jennifer Conner | 520h | 52h | 18,200 | 16,800 | 1,820 | Cubicles |
| 25 | 5.3 | Translate help section for multilingual support |  | 12w | 2019-01-21 A | 2019-04-12 | 24SS | 10% | 10.8w |  | 2019-01-28 | 2019-04-19 | 12w | 9d | 0d |  |  | Wanda Cook | 480h | 48h | 9,600 | 9,600 | 960 | Cubicles |
| 26 | 5.4 | Write web application code comments |  | 3w | 2019-01-21 A | 2019-02-08 | 25SS | 40% | 1.8w |  | 2019-01-28 | 2019-02-15 | 3w | 54d |  |  |  | Kathy Stakes | 120h | 48h | 3,960 | 3,960 | 1,584 | Cubicles |
| 27 | 5.5 | Edit/Publish application documentation | milestone | 0d | 2019-04-19 | 2019-04-19 | 24 |  |  |  | 2019-04-19 | 2019-04-19 | 0d | 4d |  | start no earlier than 2019-04-08 |  |  |  |  |  |  |  | Boardroom |

| ID | WBS | Task | Type | Duration | Start | Finish | Predecessors | Baseline start | Baseline finish | Baseline duration | Total slack | Constraint | Deadline | Resources | Work | Cost | Baseline cost | Location |
| --- | --- | --- | --- | --- | --- | --- | --- | --- | --- | --- | --- | --- | --- | --- | --- | --- | --- | --- |
| 28 | 6 | **Deployment/Maintenance** |  | 1w | 2019-04-19 | 2019-04-25 |  | 2019-04-19 | 2019-04-25 | 1w |  |  |  |  | 56h | 1,680 | 1,680 |  |
| 29 | 6.1 | Advertisement/Google Ads |  | 2d | 2019-04-19 | 2019-04-22 |  | 2019-04-19 | 2019-04-22 | 2d | 0d |  |  | John Carmack | 16h | 800 | 800 | Cubicles |
| 30 | 6.2 | First-week Bug Reports |  | 1w | 2019-04-19 | 2019-04-25 | 29SS | 2019-04-19 | 2019-04-25 | 1w | 0d |  |  | Wilbur Phillips | 40h | 880 | 880 | Boardroom |
| 31 | 6.3 | Software Maintenance Team Handoff | milestone | 0d | 2019-04-25 | 2019-04-25 | 30 | 2019-04-25 | 2019-04-25 | 0d | 0d | start no earlier than 2019-04-12 | 2019-04-27 |  |  |  |  | Boardroom |
