# Don Funk Music Video

Schedule from MS Project, 2016-01-04 to 2016-07-29, costs in $.
P8 LLC

## Calendars

- Standard: Mon-Fri 08:00-12:00, 13:00-17:00; Sat-Sun off. Exceptions (off unless hours are given): 2016-01-18 to 2018-01-15 (Martin Luther King Jr. Day, recurring), 2016-05-30 to 2018-05-28 (Memorial Day, recurring).
- Overnight Beach Filming: Mon 21:00-24:00; Tue-Fri 00:00-03:00, 21:00-24:00; Sat 00:00-03:00; Sun off. Exceptions (off unless hours are given): 2016-01-18 to 2018-01-15 (Martin Luther King Jr. Day, recurring), 2016-05-30 to 2018-05-28 (Memorial Day, recurring).

## Resources

| Resource | Unit | Rate | Notes |
| --- | --- | --- | --- |
| Jamie Reding |  | 25 | Jamie on vacation Jan 28 and 29; available for consult at home if necessary |
| Scott Seely |  | 19.5 |  |
| Jeff Pike |  | 18.75 |  |
| Judy Lew |  | 19.5 |  |
| Brenda Diaz |  | 12.75 |  |
| Brad Sutton |  | 16.5 |  |
| Annete Hill |  | 20 |  |
| Ryan Ihrig |  | 12 |  |
| Yan Li |  | 18.5 |  |
| Sound Technician |  | 16.5 |  |
| Digital Truck-Mounted Video Camera |  | 25 |  |
| Sound Editing Studio |  | 31.25 |  |
| Light Banks |  |  |  |
| Video Editing Studio |  | 31.25 |  |
| Microphone Bundles |  |  |  |
| Dolly |  | 3.12 |  |
| DVD | 2-hour disc | 10 |  |
| Travel |  |  |  |
| Food |  |  |  |
| Shu Ito |  |  |  |
| Maria Hammond |  |  |  |
| Jim Kim |  |  |  |
| Bjorn Rettig |  |  |  |
| Florian Voss |  |  |  |
| Jane Clayton |  |  |  |
| Greg Guzik |  |  |  |
| David Barber |  |  |  |
| Annette Hill |  |  |  |
| Don Funk |  |  |  |
| Patricia Doyle |  |  |  |
| Luis Bonifaz |  |  |  |
| Chris Preston |  |  |  |
| electrician |  |  |  |
| dancers |  |  |  |
| musician |  |  |  |
| Dry Ice | 10 lb block |  |  |
| Frank Zhang |  |  |  |
| Bottled Water | 24 bottle case |  |  |
| Ido Ben-Sachar |  |  |  |
| Eva Corets |  |  |  |

## Schedule

| ID | WBS | Task | Type | Duration | Start | Finish | Predecessors | Total slack | Free slack | Constraint | Resources | Work | Cost |
| --- | --- | --- | --- | --- | --- | --- | --- | --- | --- | --- | --- | --- | --- |
| 1 | 1 | **Pre-Production** |  | 88d | 2016-01-04 | 2016-05-05 |  | -4d | 0d |  |  | 1111.43h | 18,717.14 |
| 2 | 1.1 | Pre-Production begins | milestone | 0d | 2016-01-04 | 2016-01-04 |  | -4d | 0d |  |  |  |  |
| 3 | 1.2 | Review screenplay |  | 3.6w | 2016-01-04 | 2016-01-26 | 2 | -4d | 0d |  | Scott Seely; Jeff Pike | 240h | 4,590 |
| 4 | 1.3 | Develop scene blocking and schedule |  | 2.12w | 2016-01-20 | 2016-02-01 | 3 | -4d | 0d | start no later than 2016-01-20 | Scott Seely [58%]; Judy Lew [59.7%] | 80h | 1,560 |
| 5 | 1.4 | Develop production layouts |  | 0.5mo | 2016-02-02 | 2016-02-18 | 4 | 6.75d | 0d |  | Jeff Pike; Brenda Diaz; Annete Hill [50%]; Brad Sutton | 280h | 4,640 |
| 6 | 1.5 | Identify and reserve locations |  | 5w | 2016-02-19 | 2016-03-24 | 5 | 6.75d | 0d |  | Jeff Pike [50%]; Yan Li [57.1%]; Annete Hill [28.6%]; Ryan Ihrig [75%]; DVD [8 2-hour disc] | 421.43h | 7,012.14 |
| 7 | 1.6 | Book musicians |  | 2w | 2016-03-25 | 2016-04-07 | 6 | 6.75d | 0d |  |  |  |  |
| 8 | 1.7 | Book dancers |  | 2w | 2016-04-08 | 2016-04-21 | 7 | 6.75d | 0d |  |  |  |  |
| 9 | 1.8 | Reserve audio recording equipment |  | 1w | 2016-04-22 | 2016-04-28 | 8 | 6.75d | 0d |  |  |  |  |
| 10 | 1.9 | Reserve video recording equipment |  | 5d | 2016-04-29 | 2016-05-05 | 9 | 6.75d | 0d |  |  |  |  |
| 11 | 1.10 | **Status Meeting** |  | 69.12d | 2016-01-04 | 2016-04-11 |  | 78.62d |  |  |  | 90h | 915 |
| 12 | 1.10.1 | Status Meeting 1 |  | 1h | 2016-01-04 | 2016-01-04 |  | 147.62d |  | start no earlier than 2016-01-04 | Brad Sutton; Chris Preston; Eva Corets; Jamie Reding; Jane Clayton; Judy Lew | 6h | 61 |
| 13 | 1.10.2 | Status Meeting 2 |  | 1h | 2016-01-11 | 2016-01-11 |  | 142.62d |  | start no earlier than 2016-01-11 | Brad Sutton; Chris Preston; Eva Corets; Jamie Reding; Jane Clayton; Judy Lew | 6h | 61 |
| 14 | 1.10.3 | Status Meeting 3 |  | 1h | 2016-01-19 | 2016-01-19 |  | 137.62d |  | start no earlier than 2016-01-18 | Brad Sutton; Chris Preston; Eva Corets; Jamie Reding; Jane Clayton; Judy Lew | 6h | 61 |
| 15 | 1.10.4 | Status Meeting 4 |  | 1h | 2016-01-25 | 2016-01-25 |  | 133.62d |  | start no earlier than 2016-01-25 | Brad Sutton; Chris Preston; Eva Corets; Jamie Reding; Jane Clayton; Judy Lew | 6h | 61 |
| 16 | 1.10.5 | Status Meeting 5 |  | 1h | 2016-02-01 | 2016-02-01 |  | 128.62d |  | start no earlier than 2016-02-01 | Brad Sutton; Chris Preston; Eva Corets; Jamie Reding; Jane Clayton; Judy Lew | 6h | 61 |
| 17 | 1.10.6 | Status Meeting 6 |  | 1h | 2016-02-08 | 2016-02-08 |  | 123.62d |  | start no earlier than 2016-02-08 | Brad Sutton; Chris Preston; Eva Corets; Jamie Reding; Jane Clayton; Judy Lew | 6h | 61 |
| 18 | 1.10.7 | Status Meeting 7 |  | 1h | 2016-02-15 | 2016-02-15 |  | 118.62d |  | start no earlier than 2016-02-15 | Brad Sutton; Chris Preston; Eva Corets; Jamie Reding; Jane Clayton; Judy Lew | 6h | 61 |
| 19 | 1.10.8 | Status Meeting 8 |  | 1h | 2016-02-22 | 2016-02-22 |  | 113.62d |  | start no earlier than 2016-02-22 | Brad Sutton; Chris Preston; Eva Corets; Jamie Reding; Jane Clayton; Judy Lew | 6h | 61 |
| 20 | 1.10.9 | Status Meeting 9 |  | 1h | 2016-02-29 | 2016-02-29 |  | 108.62d |  | start no earlier than 2016-02-29 | Brad Sutton; Chris Preston; Eva Corets; Jamie Reding; Jane Clayton; Judy Lew | 6h | 61 |
| 21 | 1.10.10 | Status Meeting 10 |  | 1h | 2016-03-07 | 2016-03-07 |  | 103.62d |  | start no earlier than 2016-03-07 | Brad Sutton; Chris Preston; Eva Corets; Jamie Reding; Jane Clayton; Judy Lew | 6h | 61 |
| 22 | 1.10.11 | Status Meeting 11 |  | 1h | 2016-03-14 | 2016-03-14 |  | 98.62d |  | start no earlier than 2016-03-14 | Brad Sutton; Chris Preston; Eva Corets; Jamie Reding; Jane Clayton; Judy Lew | 6h | 61 |
| 23 | 1.10.12 | Status Meeting 12 |  | 1h | 2016-03-21 | 2016-03-21 |  | 93.62d |  | start no earlier than 2016-03-21 | Brad Sutton; Chris Preston; Eva Corets; Jamie Reding; Jane Clayton; Judy Lew | 6h | 61 |
| 24 | 1.10.13 | Status Meeting 13 |  | 1h | 2016-03-28 | 2016-03-28 |  | 88.62d |  | start no earlier than 2016-03-28 | Brad Sutton; Chris Preston; Eva Corets; Jamie Reding; Jane Clayton; Judy Lew | 6h | 61 |
| 25 | 1.10.14 | Status Meeting 14 |  | 1h | 2016-04-04 | 2016-04-04 |  | 83.62d |  | start no earlier than 2016-04-04 | Brad Sutton; Chris Preston; Eva Corets; Jamie Reding; Jane Clayton; Judy Lew | 6h | 61 |
| 26 | 1.10.15 | Status Meeting 15 |  | 1h | 2016-04-11 | 2016-04-11 |  | 78.62d |  | start no earlier than 2016-04-11 | Brad Sutton; Chris Preston; Eva Corets; Jamie Reding; Jane Clayton; Judy Lew | 6h | 61 |
| 27 | 1.11 | Pre-Production complete | milestone | 0d | 2016-05-05 | 2016-05-05 | 10 | 6.75d | 0d |  |  |  |  |

Notes:
- 7: Call Andy Teal for the mandolin

| ID | WBS | Task | Type | Duration | Start | Finish | Predecessors | Total slack | Free slack | Constraint | Deadline | Calendar | Resources | Work | Cost |
| --- | --- | --- | --- | --- | --- | --- | --- | --- | --- | --- | --- | --- | --- | --- | --- |
| 28 | 2 | **Production** |  | 33.75d | 2016-05-05 | 2016-06-23 |  | 0d |  |  |  |  |  | 709h | 4,200 |
| 29 | 2.1 | Production begins | milestone | 0d | 2016-05-05 | 2016-05-05 | 27 | 6.75d | 0d |  |  |  |  |  |  |
| 30 | 2.2 | **Scene 1** |  | 6.75d | 2016-05-05 | 2016-05-16 |  | 6.75d |  |  |  |  |  | 189h | 1,570 |
| 31 | 2.2.1 | Scene 1 begin | milestone | 0d | 2016-05-05 | 2016-05-05 | 29 | 6.75d | 0d |  |  |  |  |  |  |
| 32 | 2.2.2 | Scene 1 setup |  | 2d | 2016-05-06 | 2016-05-09 | 31 | 6.75d | 0d |  |  |  | Light Banks; Chris Preston; Brad Sutton | 48h | 264 |
| 33 | 2.2.3 | Scene 1 rehearsal |  | 6h | 2016-05-10 | 2016-05-10 | 32 | 6.75d | 0d |  |  |  | Food [0.1%]; Frank Zhang [50%]; Jim Kim; dancers; musician | 21h | 500 |
| 34 | 2.2.4 | Scene 1 vocal recording |  | 1d | 2016-05-10 | 2016-05-11 | 33 | 6.75d | 0d |  |  |  | Food [0.1%]; Jeff Pike; Don Funk; Sound Technician; musician | 32h | 532 |
| 35 | 2.2.5 | Scene 1 video shoot |  | 2d | 2016-05-11 | 2016-05-13 | 34 | 6.75d | 0d |  |  |  | Sound Technician; Microphone Bundles; Don Funk; DVD [1 2-hour disc]; David Barber [50%]; Greg Guzik; Bottled Water [1 24 bottle case] | 72h | 274 |
| 36 | 2.2.6 | Scene 1 teardown |  | 1d | 2016-05-13 | 2016-05-16 | 35 | 6.75d | 0d |  |  |  | Ido Ben-Sachar; Patricia Doyle | 16h |  |
| 37 | 2.2.7 | Scene 1 complete | milestone | 0d | 2016-05-16 | 2016-05-16 | 36 | 6.75d | 6.25d |  | 2016-05-27 |  |  |  |  |
| 38 | 2.3 | **Scene 2** |  | 6.75d | 2016-05-25 | 2016-06-03 |  | 0.5d |  |  |  |  |  | 226h | 1,554 |
| 39 | 2.3.1 | Scene 2 begin | milestone | 0d | 2016-05-25 | 2016-05-25 | 37 | 0.5d | 0d | start no earlier than 2016-05-25 |  |  |  |  |  |
| 40 | 2.3.2 | Scene 2 setup |  | 2d | 2016-05-25 | 2016-05-26 | 39 | 0.5d | 0d |  |  |  | Brad Sutton; Dolly; Chris Preston; electrician | 64h | 314 |
| 41 | 2.3.3 | Scene 2 rehearsal |  | 6h | 2016-05-27 | 2016-05-27 | 40 | 0.5d | 0d |  |  |  | Food [0.1%]; Luis Bonifaz; dancers; musician | 18h | 500 |
| 42 | 2.3.4 | Scene 2 vocal recording |  | 1d | 2016-05-27 | 2016-05-31 | 41 | 0.5d | 0d |  |  |  | Yan Li; Sound Technician; Don Funk; musician | 32h | 280 |
| 43 | 2.3.5 | Scene 2 video shoot |  | 2d | 2016-05-31 | 2016-06-02 | 42 | 0.5d | 0d |  |  |  | Digital Truck-Mounted Video Camera; Dolly; Don Funk; DVD [1 2-hour disc]; dancers; Bottled Water [1 24 bottle case]; Jane Clayton; musician | 96h | 460 |
| 44 | 2.3.6 | Scene 2 teardown |  | 1d | 2016-06-02 | 2016-06-03 | 43 | 0.5d | 0d |  |  |  | Ido Ben-Sachar; Patricia Doyle | 16h |  |
| 45 | 2.3.7 | Scene 2 complete | milestone | 0d | 2016-06-03 | 2016-06-03 | 44 | 0.5d | 0d |  |  |  |  |  |  |
| 46 | 2.4 | **Scene 3** |  | 7.25d | 2016-06-03 | 2016-06-14 |  | 0d |  |  |  |  |  | 138h | 406 |
| 47 | 2.4.1 | Scene 3 begin | milestone | 0d | 2016-06-03 | 2016-06-03 | 45 | 0.5d | 0d |  |  |  |  |  |  |
| 48 | 2.4.2 | Scene 3 setup |  | 2d | 2016-06-03 | 2016-06-07 | 47 | 0.5d | 0d |  |  |  | Brad Sutton; Chris Preston | 32h | 264 |
| 49 | 2.4.3 | Scene 3 rehearsal |  | 6h | 2016-06-07 | 2016-06-08 | 48 | 0.5d | 0d |  |  |  | dancers; Eva Corets; musician | 18h |  |
| 50 | 2.4.4 | Scene 3 vocal recording |  | 1d | 2016-06-08 | 2016-06-09 | 49 | 0.5d |  |  |  |  | musician; Sound Technician; Don Funk | 24h | 132 |
| 51 | 2.4.5 | Scene 3 video shoot |  | 2d | 2016-06-09 | 2016-06-14 | 50 | 0.25d |  |  |  | Overnight Beach Filming | Bottled Water [1 24 bottle case]; dancers; DVD [1 2-hour disc]; Dry Ice [1 10 lb block]; Don Funk; Florian Voss | 48h | 10 |
| 52 | 2.4.6 | Scene 3 teardown |  | 1d | 2016-06-14 | 2016-06-14 | 51 | 0d |  |  |  |  | Ido Ben-Sachar; Patricia Doyle | 16h |  |
| 53 | 2.4.7 | Scene 3 complete | milestone | 0d | 2016-06-14 | 2016-06-14 | 52 | 0d |  |  |  |  |  |  |  |

| ID | WBS | Task | Type | Duration | Start | Finish | Predecessors | Total slack | Deadline | Resources | Work | Cost |
| --- | --- | --- | --- | --- | --- | --- | --- | --- | --- | --- | --- | --- |
| 54 | 2.5 | **Scene 4** |  | 6.75d | 2016-06-14 | 2016-06-23 |  | 0d |  |  | 156h | 670 |
| 55 | 2.5.1 | Scene 4 begin | milestone | 0d | 2016-06-14 | 2016-06-14 | 53 | 0d |  |  |  |  |
| 56 | 2.5.2 | Scene 4 setup |  | 2d | 2016-06-15 | 2016-06-16 | 55 | 0d |  | Brad Sutton; Chris Preston; electrician | 48h | 264 |
| 57 | 2.5.3 | Scene 4 rehearsal |  | 6h | 2016-06-17 | 2016-06-17 | 56 | 0d |  | dancers; musician | 12h |  |
| 58 | 2.5.4 | Scene 4 vocal recording |  | 1d | 2016-06-17 | 2016-06-20 | 57 | 0d |  | musician; Sound Technician; Don Funk; Luis Bonifaz | 32h | 132 |
| 59 | 2.5.5 | Scene 4 video shoot |  | 2d | 2016-06-20 | 2016-06-22 | 58 | 0d |  | Sound Technician; DVD [1 2-hour disc]; Don Funk; David Barber [50%]; Dry Ice [1 10 lb block]; Frank Zhang [50%]; Bottled Water [1 24 bottle case] | 48h | 274 |
| 60 | 2.5.6 | Scene 4 teardown |  | 1d | 2016-06-22 | 2016-06-23 | 59 | 0d |  | Patricia Doyle; Ido Ben-Sachar | 16h |  |
| 61 | 2.5.7 | Scene 4 complete | milestone | 0d | 2016-06-23 | 2016-06-23 | 60 | 0d |  |  |  |  |
| 62 | 2.6 | Production complete | milestone | 0d | 2016-06-23 | 2016-06-23 | 61 | 0d | 2016-07-08 |  |  |  |
| 63 | 3 | **Post-Production** |  | 26d | 2016-06-23 | 2016-07-29 |  | 0d |  |  | 754h | 9,184.5 |
| 64 | 3.1 | Post-Production Begins | milestone | 0d | 2016-06-23 | 2016-06-23 | 62 | 0d |  |  |  |  |
| 65 | 3.2 | Log video footage |  | 3d | 2016-06-23 | 2016-06-28 | 64 | 0d |  | Video Editing Studio; Shu Ito | 48h | 750 |
| 66 | 3.3 | Log audio tracks by scene |  | 2d | 2016-06-23 | 2016-06-27 | 64 | 1d |  | Sound Editing Studio; Maria Hammond; Jim Kim | 48h | 500 |
| 67 | 3.4 | Rough edit video - paper |  | 1w | 2016-06-28 | 2016-07-05 | 65, 66 | 0d |  | Bjorn Rettig [50%]; Florian Voss; Jamie Reding; Jane Clayton; Shu Ito | 180h | 1,000 |
| 68 | 3.5 | Rough audio edit |  | 1w | 2016-07-05 | 2016-07-12 | 67 | 0d |  |  |  |  |
| 69 | 3.6 | Fine audio edit |  | 3d | 2016-07-12 | 2016-07-15 | 68 | 10d |  | Sound Editing Studio; Maria Hammond; Jim Kim | 72h | 750 |
| 70 | 3.7 | Fine video edit |  | 3d | 2016-07-12 | 2016-07-15 | 68 | 0d |  | Video Editing Studio; Shu Ito; Greg Guzik; David Barber [50%] | 84h | 750 |
| 71 | 3.8 | Dub audio to video |  | 2d | 2016-07-15 | 2016-07-19 | 70 | 0d |  | Video Editing Studio; Shu Ito | 32h | 500 |
| 72 | 3.9 | Internal review viewing |  | 1d | 2016-07-19 | 2016-07-20 | 71 | 0d |  | Scott Seely; Jamie Reding; Jeff Pike; Judy Lew; Brad Sutton; Brenda Diaz; Annette Hill [50%]; Don Funk; Ryan Ihrig | 53h | 783 |
| 73 | 3.10 | Final edits |  | 4d | 2016-07-20 | 2016-07-25 | 72 | 0d |  | Jamie Reding; Scott Seely; Jeff Pike; Brad Sutton; Annette Hill [50%]; Video Editing Studio | 132h | 2,664 |
| 74 | 3.11 | Formal approval viewing |  | 1d | 2016-07-25 | 2016-07-26 | 73 | 0d |  | Scott Seely; Judy Lew; Brad Sutton; Don Funk; Annette Hill [50%]; Jane Clayton; Video Editing Studio | 41h | 559.5 |
| 75 | 3.12 | Duplicate audio and video masters |  | 1d | 2016-07-26 | 2016-07-27 | 74 | 0d |  | Sound Technician; Sound Editing Studio; Video Editing Studio; Shu Ito; Patricia Doyle; Luis Bonifaz | 48h | 632 |
| 76 | 3.13 | Archive Copy 1 AV masters |  | 1d | 2016-07-27 | 2016-07-28 | 75 | 0d |  | Yan Li | 8h | 148 |
| 77 | 3.14 | Send Copy 2 AV master and dubbed master to |  | 1d | 2016-07-28 | 2016-07-29 | 76 | 0d |  | Yan Li | 8h | 148 |
| 78 | 3.15 | Post-Production complete | milestone | 0d | 2016-07-29 | 2016-07-29 | 77 | 0d |  |  |  |  |
