# Don Funk Cost Resources

Schedule from MS Project, 2016-01-04 to 2016-06-01, costs in $.
P8 LLC

## Calendars

- Standard: Mon-Fri 08:00-12:00, 13:00-17:00; Sat-Sun off. Exceptions (off unless hours are given): 2016-01-18 to 2018-01-15 (Martin Luther King Jr. Day, recurring), 2016-05-30 to 2018-05-28 (Memorial Day, recurring).

## Resources

| Resource | Unit | Rate | Notes |
| --- | --- | --- | --- |
| Jamie Reding |  | 25 | Jamie on vacation Jan 28 and 29; available for consult at home if necessary |
| Scott Seely |  | 19.5 |  |
| Jeff Pike |  | 18.75 |  |
| Judy Lew |  | 19.5 |  |
| Brenda Diaz |  | 12.75 |  |
| Brad Sutton |  | 16.5 |  |
| Annete Hill |  | 20 |  |
| Ryan Ihrig |  | 12 |  |
| Yan Li |  | 18.5 |  |
| Sound Technician |  | 16.5 |  |
| Digital Truck-Mounted Video Camera |  | 25 |  |
| Sound Editing Studio |  | 31.25 |  |
| Light Banks |  |  |  |
| Video Editing Studio |  | 31.25 |  |
| Microphone Bundles |  |  |  |
| Dolly |  | 3.12 |  |
| DVD | 2-hour disc | 10 |  |
| Travel |  |  |  |
| Food |  |  |  |
| David Barber |  | 15 |  |

## Schedule

| ID | WBS | Task | Type | Duration | Start | Finish | Predecessors | Total slack | Resources | Work | Cost |
| --- | --- | --- | --- | --- | --- | --- | --- | --- | --- | --- | --- |
| 1 | 1 | **Pre-Production** |  | 85d | 2016-01-04 | 2016-05-02 |  | 0d |  | 1080h | 23,751.43 |
| 2 | 1.1 | Pre-Production begins | milestone | 0d | 2016-01-04 | 2016-01-04 |  | 0d |  |  |  |
| 3 | 1.2 | Review screenplay |  | 3.6w | 2016-01-04 | 2016-01-26 | 2 | 0d | Scott Seely; Jeff Pike | 240h | 4,590 |
| 4 | 1.3 | Develop scene blocking and schedule |  | 1.2w | 2016-01-26 | 2016-02-02 | 3 | 0d | Scott Seely; Judy Lew | 80h | 1,560 |
| 5 | 1.4 | Develop production layouts |  | 0.5mo | 2016-02-02 | 2016-02-15 | 4 | 0d | Jeff Pike; Brenda Diaz; Annete Hill [50%]; Brad Sutton | 280h | 4,640 |
| 6 | 1.5 | Identify and reserve locations |  | 5w | 2016-02-16 | 2016-03-21 | 5 | 0d | Jeff Pike [57.1%]; Yan Li [57.1%]; Annete Hill [28.6%]; Ryan Ihrig [57.1%]; DVD [8 2-hour disc]; Travel [0.1%] | 400h | 11,851.43 |
| 7 | 1.6 | Book musicians |  | 2w | 2016-03-22 | 2016-04-04 | 6 | 0d | David Barber [50%]; Brenda Diaz [50%] | 80h | 1,110 |
| 8 | 1.7 | Book dancers |  | 2w | 2016-04-05 | 2016-04-18 | 7 | 0d |  |  |  |
| 9 | 1.8 | Reserve audio recording equipment |  | 1w | 2016-04-19 | 2016-04-25 | 8 | 0d |  |  |  |
| 10 | 1.9 | Reserve video recording equipment |  | 5d | 2016-04-26 | 2016-05-02 | 9 | 0d |  |  |  |
| 11 | 1.10 | Pre-Production complete | milestone | 0d | 2016-05-02 | 2016-05-02 | 10 | 0d |  |  |  |
| 12 | 2 | **Production** |  | 20.25d | 2016-05-02 | 2016-06-01 |  | 0d |  |  | 1,250 |
| 13 | 2.1 | Production begins | milestone | 0d | 2016-05-02 | 2016-05-02 | 11 | 0d |  |  |  |
| 14 | 2.2 | **Scene 1** |  | 6.75d | 2016-05-02 | 2016-05-11 |  | 0d |  |  | 750 |
| 15 | 2.2.1 | Scene 1 begin | milestone | 0d | 2016-05-02 | 2016-05-02 | 13 | 0d |  |  |  |
| 16 | 2.2.2 | Scene 1 setup |  | 2d | 2016-05-03 | 2016-05-04 | 15 | 0d |  |  |  |
| 17 | 2.2.3 | Scene 1 rehearsal |  | 6h | 2016-05-05 | 2016-05-05 | 16 | 0d | Food [0.1%] |  | 500 |
| 18 | 2.2.4 | Scene 1 vocal recording |  | 1d | 2016-05-05 | 2016-05-06 | 17 | 0d | Food [0.1%] |  | 250 |
| 19 | 2.2.5 | Scene 1 video shoot |  | 2d | 2016-05-06 | 2016-05-10 | 18 | 0d |  |  |  |
| 20 | 2.2.6 | Scene 1 teardown |  | 1d | 2016-05-10 | 2016-05-11 | 19 | 0d |  |  |  |
| 21 | 2.2.7 | Scene 1 complete | milestone | 0d | 2016-05-11 | 2016-05-11 | 20 | 0d |  |  |  |
| 22 | 2.3 | **Scene 2** |  | 6.75d | 2016-05-11 | 2016-05-20 |  | 0d |  |  | 500 |
| 23 | 2.3.1 | Scene 2 begin | milestone | 0d | 2016-05-11 | 2016-05-11 | 21 | 0d |  |  |  |
| 24 | 2.3.2 | Scene 2 setup |  | 2d | 2016-05-11 | 2016-05-13 | 23 | 0d |  |  |  |
| 25 | 2.3.3 | Scene 2 rehearsal |  | 6h | 2016-05-13 | 2016-05-16 | 24 | 0d | Food [0.1%] |  | 500 |
| 26 | 2.3.4 | Scene 2 vocal recording |  | 1d | 2016-05-16 | 2016-05-17 | 25 | 0d |  |  |  |
| 27 | 2.3.5 | Scene 2 video shoot |  | 2d | 2016-05-17 | 2016-05-19 | 26 | 0d |  |  |  |
| 28 | 2.3.6 | Scene 2 teardown |  | 1d | 2016-05-19 | 2016-05-20 | 27 | 0d |  |  |  |
| 29 | 2.3.7 | Scene 2 complete | milestone | 0d | 2016-05-20 | 2016-05-20 | 28 | 0d |  |  |  |

Notes:
- 7: Call Andy Teal for the mandolin

| ID | WBS | Task | Type | Duration | Start | Finish | Predecessors | Total slack |
| --- | --- | --- | --- | --- | --- | --- | --- | --- |
| 30 | 2.4 | **Scene 3** |  | 6.75d | 2016-05-20 | 2016-06-01 |  | 0d |
| 31 | 2.4.1 | Scene 3 begin | milestone | 0d | 2016-05-20 | 2016-05-20 | 29 | 0d |
| 32 | 2.4.2 | Scene 3 setup |  | 2d | 2016-05-20 | 2016-05-24 | 31 | 0d |
| 33 | 2.4.3 | Scene 3 rehearsal |  | 6h | 2016-05-24 | 2016-05-25 | 32 | 0d |
| 34 | 2.4.4 | Scene 3 vocal recording |  | 1d | 2016-05-25 | 2016-05-26 | 33 | 0d |
| 35 | 2.4.5 | Scene 3 video shoot |  | 2d | 2016-05-26 | 2016-05-31 | 34 | 0d |
| 36 | 2.4.6 | Scene 3 teardown |  | 1d | 2016-05-31 | 2016-06-01 | 35 | 0d |
| 37 | 2.4.7 | Scene 3 complete | milestone | 0d | 2016-06-01 | 2016-06-01 | 36 | 0d |
| 38 | 2.5 | Production complete | milestone | 0d | 2016-06-01 | 2016-06-01 | 37 | 0d |
| 39 | 3 | **Post-Production** |  | 105.25d | 2016-01-04 | 2016-06-01 |  | 0d |
| 40 | 3.1 | Post-Production Begins | milestone | 0d | 2016-06-01 | 2016-06-01 | 38 | 0d |
| 41 | 3.2 | Post-Production complete | milestone | 0d | 2016-01-04 | 2016-01-04 |  | 105.25d |
