# Don Funk Music Video

Schedule from MS Project, 2016-01-04 to 2016-08-04, status date 2016-06-15, costs in $, A marks actual dates.
P8 LLC

## Calendars

- Standard: Mon-Fri 08:00-12:00, 13:00-17:00; Sat-Sun off. Exceptions (off unless hours are given): 2016-01-18 to 2018-01-15 (Martin Luther King Jr. Day, recurring), 2016-05-30 to 2018-05-28 (Memorial Day, recurring).
- Overnight Beach Filming: Mon 21:00-24:00; Tue-Fri 00:00-03:00, 21:00-24:00; Sat 00:00-03:00; Sun off. Exceptions (off unless hours are given): 2016-01-18 to 2018-01-15 (Martin Luther King Jr. Day, recurring), 2016-05-30 to 2018-05-28 (Memorial Day, recurring).

## Resources

| Resource | Group | Unit | Rate | Cost per use | Notes |
| --- | --- | --- | --- | --- | --- |
| Jamie Reding | Production |  | 25 |  | Jamie on vacation Jan 30 and 31; available for consult at home if necessary |
| Scott Seely | Production |  | 19.5 |  |  |
| Jeff Pike | Production |  | 18.75 |  |  |
| Judy Lew | Production |  | 19.5 |  |  |
| Brenda Diaz | Production |  | 12.75 |  |  |
| Brad Sutton | Production |  | 16.5 |  |  |
| Annete Hill | Production |  | 20 |  |  |
| Ryan Ihrig | Production |  | 12 |  |  |
| Yan Li | Production |  | 18.5 |  |  |
| Sound Technician | Crew |  | 16.5 |  |  |
| Digital Truck-Mounted Video Camera | Equipment |  | 25 | 100 |  |
| Sound Editing Studio | Lab |  | 31.25 |  |  |
| Light Banks | Equipment |  |  |  |  |
| Video Editing Studio | Lab |  | 31.25 |  |  |
| Microphone Bundles | Equipment |  |  |  |  |
| Dolly | Equipment |  | 3.12 |  |  |
| DVD | Materials | 2-hour disc | 10 |  |  |
| Travel | Cost |  |  |  |  |
| Food | Cost |  |  |  |  |
| Shu Ito | Production |  | 16 |  |  |
| Maria Hammond | Production |  | 18 |  |  |
| Jim Kim | Production |  | 16.5 |  |  |
| Bjorn Rettig | Production |  | 18 |  |  |
| Florian Voss | Production |  | 13 |  |  |
| Jane Clayton | Production |  | 15 |  |  |
| Greg Guzik | Production |  | 18.5 |  |  |
| David Barber | Production |  | 14 |  |  |
| Don Funk | Talent |  | 125 |  |  |
| Patricia Doyle | Production |  | 17.5 |  |  |
| Luis Bonifaz | Production |  | 14 |  |  |
| Chris Preston | Production |  | 17 |  |  |
| electrician | Crew |  | 30 |  |  |
| dancers | Talent |  | 20 |  |  |
| musician | Talent |  | 20 |  |  |
| Dry Ice | Materials | 10 lb block | 12 |  |  |
| Frank Zhang | Production |  | 16.5 |  |  |
| Bottled Water | Materials | 24 bottle case | 5 |  |  |
| Ido Ben-Sachar | Production |  | 13.5 |  |  |
| Eva Corets | Production |  | 13.5 |  |  |
| Annette Hill |  |  |  |  |  |

## Schedule

| ID | WBS | Task | Type | Duration | Start | Finish | Predecessors | Complete | Baseline start | Baseline finish | Baseline duration | Constraint | Deadline | Resources | Work | Actual work | Cost | Baseline cost | Actual cost |
| --- | --- | --- | --- | --- | --- | --- | --- | --- | --- | --- | --- | --- | --- | --- | --- | --- | --- | --- | --- |
| 1 | 1 | **Pre-Production** |  | 89.25d | 2016-01-04 A | 2016-05-09 A |  | 100% | 2016-01-04 | 2016-05-11 | 91.75d |  |  |  | 1387.49h | 1387.49h | 22,223.48 | 18,999.64 | 22,223.48 |
| 2 | 1.1 | Pre-Production begins | milestone | 0d | 2016-01-04 A | 2016-01-04 A |  | 100% | 2016-01-04 | 2016-01-04 |  |  |  |  |  |  |  |  |  |
| 3 | 1.2 | Review screenplay |  | 3.6w | 2016-01-04 A | 2016-01-26 A | 2 | 100% | 2016-01-04 | 2016-01-26 | 3.6w |  |  | Scott Seely; Jeff Pike | 240h | 240h | 4,590 | 4,590 | 4,590 |
| 4 | 1.3 | Develop scene blocking and schedule |  | 9.62d | 2016-01-26 A | 2016-02-04 A | 3 | 100% | 2016-01-26 | 2016-02-05 | 2w |  |  | Scott Seely [58%]; Judy Lew [59.7%] | 78.21h | 78.21h | 1,525.06 | 1,560 | 1,525.06 |
| 5 | 1.4 | Develop production layouts |  | 0.53mo | 2016-02-05 A | 2016-02-24 A | 4 | 100% | 2016-02-05 | 2016-02-24 | 0.53mo |  |  | Jeff Pike; Brenda Diaz; Annete Hill [50%]; Brad Sutton | 280h | 280h | 4,640 | 4,640 | 4,640 |
| 6 | 1.5 | Identify and reserve locations |  | 22.5d | 2016-02-24 A | 2016-03-28 A | 5 | 100% | 2016-02-24 | 2016-03-30 | 5w |  |  | Jeff Pike [50%]; Yan Li [57.1%]; Annete Hill [28.6%]; Ryan Ihrig [75%]; DVD [7.2 2-hour disc] | 379.29h | 379.29h | 5,950.93 | 6,612.14 | 5,950.93 |
| 7 | 1.6 | Book musicians |  | 2w | 2016-03-28 A | 2016-04-11 A | 6 | 100% | 2016-03-28 | 2016-04-11 | 2w |  |  | Annette Hill [50%]; David Barber [50%] | 80h | 80h | 560 | 560 | 560 |
| 8 | 1.7 | Book dancers |  | 2w | 2016-04-11 A | 2016-04-25 A | 7 | 100% | 2016-04-11 | 2016-04-25 | 2w |  |  | Annette Hill [50%]; David Barber [50%] | 80h | 80h | 560 | 560 | 560 |
| 9 | 1.8 | Reserve audio recording equipment |  | 1w | 2016-04-25 A | 2016-05-02 A | 8 | 100% | 2016-04-25 | 2016-05-02 | 1w |  |  | Yan Li; Sound Technician | 80h | 80h | 1,400 | 1,400 | 1,400 |
| 10 | 1.9 | Reserve video recording equipment |  | 5d | 2016-05-02 A | 2016-05-09 A | 9 | 100% | 2016-05-02 | 2016-05-09 | 5d |  |  | Sound Technician; Yan Li | 80h | 80h | 1,400 | 1,400 | 1,400 |
| 11 | 1.10 | **Status Meeting** |  | 69.12d | 2016-01-04 A | 2016-04-11 A |  | 100% | 2016-01-04 | 2016-04-11 | 69.12d |  |  |  | 90h | 90h | 1,597.5 | 1,597.5 | 1,597.5 |
| 12 | 1.10.1 | Status Meeting 1 |  | 1h | 2016-01-04 A | 2016-01-04 A |  | 100% | 2016-01-04 | 2016-01-04 | 1h | start no earlier than 2016-01-04 |  | Brad Sutton; Chris Preston; Eva Corets; Jamie Reding; Jane Clayton; Judy Lew | 6h | 6h | 106.5 | 106.5 | 106.5 |
| 13 | 1.10.2 | Status Meeting 2 |  | 1h | 2016-01-11 A | 2016-01-11 A |  | 100% | 2016-01-11 | 2016-01-11 | 1h | start no earlier than 2016-01-11 |  | Brad Sutton; Chris Preston; Eva Corets; Jamie Reding; Jane Clayton; Judy Lew | 6h | 6h | 106.5 | 106.5 | 106.5 |
| 14 | 1.10.3 | Status Meeting 3 |  | 1h | 2016-01-19 A | 2016-01-19 A |  | 100% | 2016-01-19 | 2016-01-19 | 1h | start no earlier than 2016-01-18 |  | Brad Sutton; Chris Preston; Eva Corets; Jamie Reding; Jane Clayton; Judy Lew | 6h | 6h | 106.5 | 106.5 | 106.5 |
| 15 | 1.10.4 | Status Meeting 4 |  | 1h | 2016-01-25 A | 2016-01-25 A |  | 100% | 2016-01-25 | 2016-01-25 | 1h | start no earlier than 2016-01-25 |  | Brad Sutton; Chris Preston; Eva Corets; Jamie Reding; Jane Clayton; Judy Lew | 6h | 6h | 106.5 | 106.5 | 106.5 |
| 16 | 1.10.5 | Status Meeting 5 |  | 1h | 2016-02-01 A | 2016-02-01 A |  | 100% | 2016-02-01 | 2016-02-01 | 1h | start no earlier than 2016-02-01 |  | Brad Sutton; Chris Preston; Eva Corets; Jamie Reding; Jane Clayton; Judy Lew | 6h | 6h | 106.5 | 106.5 | 106.5 |
| 17 | 1.10.6 | Status Meeting 6 |  | 1h | 2016-02-08 A | 2016-02-08 A |  | 100% | 2016-02-08 | 2016-02-08 | 1h | start no earlier than 2016-02-08 |  | Brad Sutton; Chris Preston; Eva Corets; Jamie Reding; Jane Clayton; Judy Lew | 6h | 6h | 106.5 | 106.5 | 106.5 |
| 18 | 1.10.7 | Status Meeting 7 |  | 1h | 2016-02-15 A | 2016-02-15 A |  | 100% | 2016-02-15 | 2016-02-15 | 1h | start no earlier than 2016-02-15 |  | Brad Sutton; Chris Preston; Eva Corets; Jamie Reding; Jane Clayton; Judy Lew | 6h | 6h | 106.5 | 106.5 | 106.5 |
| 19 | 1.10.8 | Status Meeting 8 |  | 1h | 2016-02-22 A | 2016-02-22 A |  | 100% | 2016-02-22 | 2016-02-22 | 1h | start no earlier than 2016-02-22 |  | Brad Sutton; Chris Preston; Eva Corets; Jamie Reding; Jane Clayton; Judy Lew | 6h | 6h | 106.5 | 106.5 | 106.5 |
| 20 | 1.10.9 | Status Meeting 9 |  | 1h | 2016-02-29 A | 2016-02-29 A |  | 100% | 2016-02-29 | 2016-02-29 | 1h | start no earlier than 2016-02-29 |  | Brad Sutton; Chris Preston; Eva Corets; Jamie Reding; Jane Clayton; Judy Lew | 6h | 6h | 106.5 | 106.5 | 106.5 |
| 21 | 1.10.10 | Status Meeting 10 |  | 1h | 2016-03-07 A | 2016-03-07 A |  | 100% | 2016-03-07 | 2016-03-07 | 1h | start no earlier than 2016-03-07 |  | Brad Sutton; Chris Preston; Eva Corets; Jamie Reding; Jane Clayton; Judy Lew | 6h | 6h | 106.5 | 106.5 | 106.5 |
| 22 | 1.10.11 | Status Meeting 11 |  | 1h | 2016-03-14 A | 2016-03-14 A |  | 100% | 2016-03-14 | 2016-03-14 | 1h | start no earlier than 2016-03-14 |  | Brad Sutton; Chris Preston; Eva Corets; Jamie Reding; Jane Clayton; Judy Lew | 6h | 6h | 106.5 | 106.5 | 106.5 |
| 23 | 1.10.12 | Status Meeting 12 |  | 1h | 2016-03-21 A | 2016-03-21 A |  | 100% | 2016-03-21 | 2016-03-21 | 1h | start no earlier than 2016-03-21 |  | Brad Sutton; Chris Preston; Eva Corets; Jamie Reding; Jane Clayton; Judy Lew | 6h | 6h | 106.5 | 106.5 | 106.5 |
| 24 | 1.10.13 | Status Meeting 13 |  | 1h | 2016-03-28 A | 2016-03-28 A |  | 100% | 2016-03-28 | 2016-03-28 | 1h | start no earlier than 2016-03-28 |  | Brad Sutton; Chris Preston; Eva Corets; Jamie Reding; Jane Clayton; Judy Lew | 6h | 6h | 106.5 | 106.5 | 106.5 |
| 25 | 1.10.14 | Status Meeting 14 |  | 1h | 2016-04-04 A | 2016-04-04 A |  | 100% | 2016-04-04 | 2016-04-04 | 1h | start no earlier than 2016-04-04 |  | Brad Sutton; Chris Preston; Eva Corets; Jamie Reding; Jane Clayton; Judy Lew | 6h | 6h | 106.5 | 106.5 | 106.5 |
| 26 | 1.10.15 | Status Meeting 15 |  | 1h | 2016-04-11 A | 2016-04-11 A |  | 100% | 2016-04-11 | 2016-04-11 | 1h | start no earlier than 2016-04-11 |  | Brad Sutton; Chris Preston; Eva Corets; Jamie Reding; Jane Clayton; Judy Lew | 6h | 6h | 106.5 | 106.5 | 106.5 |
| 27 | 1.11 | Pre-Production complete | milestone | 0d | 2016-05-09 A | 2016-05-09 A | 10 | 100% | 2016-05-11 | 2016-05-11 |  |  | 2016-05-11 |  |  |  |  |  |  |

Notes:
- 7: Call Andy Teal for the mandolin

| ID | WBS | Task | Type | Duration | Start | Finish | Predecessors | Complete | Remaining | Baseline start | Baseline finish | Baseline duration | Total slack | Constraint | Deadline | Calendar | Resources | Work | Actual work | Cost | Baseline cost | Actual cost |
| --- | --- | --- | --- | --- | --- | --- | --- | --- | --- | --- | --- | --- | --- | --- | --- | --- | --- | --- | --- | --- | --- | --- |
| 28 | 2 | **Production** |  | 35.5d | 2016-05-09 A | 2016-06-28 |  | 78% | 7.7d | 2016-05-11 | 2016-06-23 | 30d | 0.25d |  | 2016-06-28 |  |  | 837.16h | 681.16h | 28,354.94 | 23,499.5 | 21,661.94 |
| 29 | 2.1 | Production begins | milestone | 0d | 2016-05-09 A | 2016-05-09 A | 27 | 100% |  | 2016-05-11 | 2016-05-11 |  |  |  |  |  |  |  |  |  |  |  |
| 30 | 2.2 | **Scene 1** |  | 9.25d | 2016-05-09 A | 2016-05-20 A |  | 100% |  | 2016-05-11 | 2016-05-20 | 6.75d |  |  |  |  |  | 229.16h | 229.16h | 7,624.94 | 6,081.5 | 6,874.94 |
| 31 | 2.2.1 | Scene 1 begin | milestone | 0d | 2016-05-09 A | 2016-05-09 A | 29 | 100% |  | 2016-05-11 | 2016-05-11 | 0d |  |  |  |  |  |  |  |  |  |  |
| 32 | 2.2.2 | Scene 1 setup |  | 2d | 2016-05-11 A | 2016-05-13 A | 31 | 100% |  | 2016-05-11 | 2016-05-13 | 2d |  |  |  |  | Light Banks; Chris Preston; Brad Sutton | 48h | 48h | 536 | 536 | 536 |
| 33 | 2.2.3 | Scene 1 rehearsal |  | 6h | 2016-05-13 A | 2016-05-16 A | 32 | 100% |  | 2016-05-13 | 2016-05-16 | 6h |  |  |  |  | Food [0.1%]; Frank Zhang [50%]; Jim Kim; dancers; musician | 21h | 21h | 888.5 | 888.5 | 388.5 |
| 34 | 2.2.4 | Scene 1 vocal recording |  | 1.13d | 2016-05-16 A | 2016-05-17 A | 33 | 100% |  | 2016-05-16 | 2016-05-17 | 1d |  |  |  |  | Food [0.1%]; Jeff Pike; Don Funk; Sound Technician; musician | 36.16h | 36.16h | 1,879.46 | 1,692 | 1,629.46 |
| 35 | 2.2.5 | Scene 1 video shoot |  | 3d | 2016-05-17 A | 2016-05-20 A | 34 | 100% |  | 2016-05-17 | 2016-05-19 | 2d |  |  |  |  | Sound Technician; Microphone Bundles; Don Funk; DVD [0.25 2-hour disc]; David Barber [50%]; Greg Guzik; Bottled Water [1 24 bottle case] | 108h | 108h | 4,072.98 | 2,717 | 4,072.98 |
| 36 | 2.2.6 | Scene 1 teardown |  | 1d | 2016-05-19 A | 2016-05-20 A | 35 | 100% |  | 2016-05-19 | 2016-05-20 | 1d |  |  |  |  | Ido Ben-Sachar; Patricia Doyle | 16h | 16h | 248 | 248 | 248 |
| 37 | 2.2.7 | Scene 1 complete | milestone | 0d | 2016-05-20 A | 2016-05-20 A | 36 | 100% |  | 2016-05-20 | 2016-05-20 | 0d |  |  |  |  |  |  |  |  |  |  |
| 38 | 2.3 | **Scene 2** |  | 6.75d | 2016-05-25 A | 2016-06-03 A |  | 100% |  | 2016-05-25 | 2016-06-03 | 6.75d |  |  |  |  |  | 314h | 314h | 10,335 | 7,023 | 9,835 |
| 39 | 2.3.1 | Scene 2 begin | milestone | 0d | 2016-05-25 A | 2016-05-25 A | 37 | 100% |  | 2016-05-25 | 2016-05-25 | 0d |  | start no earlier than 2016-05-25 |  |  |  |  |  |  |  |  |
| 40 | 2.3.2 | Scene 2 setup |  | 2d | 2016-05-25 A | 2016-05-26 A | 39 | 100% |  | 2016-05-25 | 2016-05-26 | 2d |  |  |  |  | Brad Sutton; Dolly; Chris Preston; electrician | 64h | 64h | 1,066 | 1,066 | 1,066 |
| 41 | 2.3.3 | Scene 2 rehearsal |  | 14h | 2016-05-27 A | 2016-05-31 A | 40 | 100% |  | 2016-05-27 | 2016-05-27 | 6h |  |  |  |  | Food [0.1%]; Luis Bonifaz; dancers; musician | 42h | 42h | 1,256 | 824 | 756 |
| 42 | 2.3.4 | Scene 2 vocal recording |  | 3d | 2016-05-27 A | 2016-06-02 A | 41 | 100% |  | 2016-05-27 | 2016-05-31 | 1d |  |  |  |  | Yan Li; Sound Technician; Don Funk; musician | 96h | 96h | 4,320 | 1,440 | 4,320 |
| 43 | 2.3.5 | Scene 2 video shoot |  | 2d | 2016-05-31 A | 2016-06-02 A | 42 | 100% |  | 2016-05-31 | 2016-06-02 | 2d |  |  |  |  | Digital Truck-Mounted Video Camera; Dolly; Don Funk; DVD [1 2-hour disc]; dancers; Bottled Water [1 24 bottle case]; Jane Clayton; musician | 96h | 96h | 3,445 | 3,445 | 3,445 |
| 44 | 2.3.6 | Scene 2 teardown |  | 1d | 2016-06-02 A | 2016-06-03 A | 43 | 100% |  | 2016-06-02 | 2016-06-03 | 1d |  |  |  |  | Ido Ben-Sachar; Patricia Doyle | 16h | 16h | 248 | 248 | 248 |
| 45 | 2.3.7 | Scene 2 complete | milestone | 0d | 2016-06-03 A | 2016-06-03 A | 44 | 100% |  | 2016-06-03 | 2016-06-03 | 0d |  |  |  |  |  |  |  |  |  |  |
| 46 | 2.4 | **Scene 3** |  | 10.25d | 2016-06-03 A | 2016-06-17 A |  | 100% |  | 2016-06-03 | 2016-06-14 | 7.25d |  |  |  |  |  | 138h | 138h | 4,952 | 4,952 | 4,952 |
| 47 | 2.4.1 | Scene 3 begin | milestone | 0d | 2016-06-03 A | 2016-06-03 A | 45 | 100% |  | 2016-06-03 | 2016-06-03 |  |  |  |  |  |  |  |  |  |  |  |
| 48 | 2.4.2 | Scene 3 setup |  | 2d | 2016-06-03 A | 2016-06-10 A | 47 | 100% |  | 2016-06-03 | 2016-06-07 | 2d |  |  |  |  | Brad Sutton; Chris Preston | 32h | 32h | 536 | 536 | 536 |
| 49 | 2.4.3 | Scene 3 rehearsal |  | 6h | 2016-06-13 A | 2016-06-13 A | 48 | 100% |  | 2016-06-07 | 2016-06-08 | 6h |  | start no earlier than 2016-06-09 |  |  | dancers; Eva Corets; musician | 18h | 18h | 321 | 321 | 321 |
| 50 | 2.4.4 | Scene 3 vocal recording |  | 1d | 2016-06-13 A | 2016-06-14 A | 49 | 100% |  | 2016-06-08 | 2016-06-09 | 1d |  | start no earlier than 2016-06-09 |  |  | musician; Sound Technician; Don Funk | 24h | 24h | 1,292 | 1,292 | 1,292 |
| 51 | 2.4.5 | Scene 3 video shoot |  | 2d | 2016-06-14 A | 2016-06-17 A | 50 | 100% |  | 2016-06-09 | 2016-06-14 | 2d |  |  |  | Overnight Beach Filming | Bottled Water [1 24 bottle case]; dancers; DVD [1 2-hour disc]; Dry Ice [1 10 lb block]; Don Funk; Florian Voss | 48h | 48h | 2,555 | 2,555 | 2,555 |
| 52 | 2.4.6 | Scene 3 teardown |  | 1d | 2016-06-17 A | 2016-06-17 A | 51 | 100% |  | 2016-06-14 | 2016-06-14 | 1d |  |  |  |  | Ido Ben-Sachar; Patricia Doyle | 16h | 16h | 248 | 248 | 248 |
| 53 | 2.4.7 | Scene 3 complete | milestone | 0d | 2016-06-17 A | 2016-06-17 A | 52 | 100% |  | 2016-06-14 | 2016-06-14 |  |  |  |  |  |  |  |  |  |  |  |

| ID | WBS | Task | Type | Duration | Start | Finish | Predecessors | Baseline start | Baseline finish | Baseline duration | Total slack | Free slack | Resources | Work | Cost | Baseline cost |
| --- | --- | --- | --- | --- | --- | --- | --- | --- | --- | --- | --- | --- | --- | --- | --- | --- |
| 54 | 2.5 | **Scene 4** |  | 6.75d | 2016-06-17 | 2016-06-28 |  | 2016-06-14 | 2016-06-23 | 6.75d | 0.25d |  |  | 156h | 5,443 | 5,443 |
| 55 | 2.5.1 | Scene 4 begin | milestone | 0d | 2016-06-17 | 2016-06-17 | 53 | 2016-06-14 | 2016-06-14 |  | 0.25d | 0d |  |  |  |  |
| 56 | 2.5.2 | Scene 4 setup |  | 2d | 2016-06-20 | 2016-06-21 | 55 | 2016-06-15 | 2016-06-16 | 2d | 0.25d | 0d | Brad Sutton; Chris Preston; electrician | 48h | 1,016 | 1,016 |
| 57 | 2.5.3 | Scene 4 rehearsal |  | 6h | 2016-06-22 | 2016-06-22 | 56 | 2016-06-17 | 2016-06-17 | 6h | 0.25d | 0d | dancers; musician | 12h | 240 | 240 |
| 58 | 2.5.4 | Scene 4 vocal recording |  | 1d | 2016-06-22 | 2016-06-23 | 57 | 2016-06-17 | 2016-06-20 | 1d | 0.25d | 0d | musician; Sound Technician; Don Funk; Luis Bonifaz | 32h | 1,404 | 1,404 |
| 59 | 2.5.5 | Scene 4 video shoot |  | 2d | 2016-06-23 | 2016-06-27 | 58 | 2016-06-20 | 2016-06-22 | 2d | 0.25d | 0d | Sound Technician; DVD [1 2-hour disc]; Don Funk; David Barber [50%]; Dry Ice [1 10 lb block]; Frank Zhang [50%]; Bottled Water [1 24 bottle case] | 48h | 2,535 | 2,535 |
| 60 | 2.5.6 | Scene 4 teardown |  | 1d | 2016-06-27 | 2016-06-28 | 59 | 2016-06-22 | 2016-06-23 | 1d | 0.25d | 0d | Patricia Doyle; Ido Ben-Sachar | 16h | 248 | 248 |
| 61 | 2.5.7 | Scene 4 complete | milestone | 0d | 2016-06-28 | 2016-06-28 | 60 | 2016-06-23 | 2016-06-23 | 0d | 0.25d | 0d | Ido Ben-Sachar; Patricia Doyle |  |  |  |
| 62 | 2.6 | Production complete | milestone | 0d | 2016-06-28 | 2016-06-28 | 61 | 2016-06-23 | 2016-06-23 |  | 0.25d | 0d |  |  |  |  |
| 63 | 3 | **Post-Production** |  | 26.88d | 2016-06-28 | 2016-08-04 |  | 2016-06-23 | 2016-07-29 | 26d | 0d |  |  | 784h | 17,152.5 | 17,152.5 |
| 64 | 3.1 | Post-Production Begins | milestone | 0d | 2016-06-28 | 2016-06-28 | 62 | 2016-06-23 | 2016-06-23 |  | 0.25d | 0d |  |  |  |  |
| 65 | 3.2 | Log video footage |  | 3d | 2016-06-28 | 2016-07-01 | 64 | 2016-06-23 | 2016-06-28 | 3d | 0.25d | 0d | Video Editing Studio; Shu Ito; Jim Kim | 72h | 1,530 | 1,530 |
| 66 | 3.3 | Log audio tracks by scene |  | 3d | 2016-06-28 | 2016-07-01 | 64 | 2016-06-23 | 2016-06-28 | 3d | 0.25d | 0d | Sound Editing Studio; Maria Hammond; David Barber | 72h | 1,518 | 1,518 |
| 67 | 3.4 | Rough edit video - paper |  | 1w | 2016-07-01 | 2016-07-08 | 65, 66 | 2016-06-28 | 2016-07-05 | 1w | 0.25d | 0d | Bjorn Rettig [50%]; Florian Voss; Jamie Reding; Jane Clayton; Shu Ito | 180h | 3,120 | 3,120 |
| 68 | 3.5 | Rough audio edit |  | 1w | 2016-07-08 | 2016-07-15 | 67 | 2016-07-05 | 2016-07-12 | 1w | 0.25d | 0d |  |  |  |  |
| 69 | 3.6 | Fine audio edit |  | 3d | 2016-07-15 | 2016-07-20 | 68 | 2016-07-12 | 2016-07-15 | 3d | 10.88d |  | Sound Editing Studio; Maria Hammond; Jim Kim; Greg Guzik [50%] | 84h | 1,800 | 1,800 |
| 70 | 3.7 | Fine video edit |  | 3d | 2016-07-15 | 2016-07-20 | 68 | 2016-07-12 | 2016-07-15 | 3d | 0.25d | 0d | Video Editing Studio; Shu Ito; Greg Guzik [50%]; David Barber [50%] | 72h | 1,524 | 1,524 |
| 71 | 3.8 | Dub audio to video |  | 2d | 2016-07-20 | 2016-07-22 | 70 | 2016-07-15 | 2016-07-19 | 2d | 0.25d | 0d | Video Editing Studio; Shu Ito | 32h | 756 | 756 |
| 72 | 3.9 | Internal review viewing |  | 1.25d | 2016-07-22 | 2016-07-25 | 71 | 2016-07-19 | 2016-07-20 | 1d | 0d |  | Scott Seely; Jamie Reding; Jeff Pike; Judy Lew; Brad Sutton; Brenda Diaz; Don Funk; Ryan Ihrig | 50h | 1,533 | 1,533 |
| 73 | 3.10 | Final edits |  | 3.75d | 2016-07-25 | 2016-07-28 | 72 | 2016-07-20 | 2016-07-25 | 4d | 0d |  | Jamie Reding; Scott Seely; Jeff Pike; Brad Sutton; Video Editing Studio | 120h | 2,664 | 2,664 |
| 74 | 3.11 | Formal approval viewing |  | 1.62d | 2016-07-28 | 2016-08-01 | 73 | 2016-07-25 | 2016-07-26 | 1d | 0d |  | Scott Seely; Judy Lew; Brad Sutton; Don Funk; Jane Clayton; Video Editing Studio | 38h | 1,399.5 | 1,399.5 |
| 75 | 3.12 | Duplicate audio and video masters |  | 1d | 2016-08-01 | 2016-08-02 | 74 | 2016-07-26 | 2016-07-27 | 1d | 0d |  | Sound Technician; Sound Editing Studio; Video Editing Studio; Shu Ito; Patricia Doyle; Luis Bonifaz | 48h | 1,012 | 1,012 |
| 76 | 3.13 | Archive Copy 1 AV masters |  | 1d | 2016-08-02 | 2016-08-03 | 75 | 2016-07-27 | 2016-07-28 | 1d | 0d |  | Yan Li | 8h | 148 | 148 |
| 77 | 3.14 | Send Copy 2 AV master and dubbed master to |  | 1d | 2016-08-03 | 2016-08-04 | 76 | 2016-07-28 | 2016-07-29 | 1d | 0d |  | Yan Li | 8h | 148 | 148 |
| 78 | 3.15 | Post-Production complete | milestone | 0d | 2016-08-04 | 2016-08-04 | 77 | 2016-07-29 | 2016-07-29 |  | 0d |  |  |  |  |  |
